Schedule from ProjectLibre, 2020-09-07 to 2020-12-11.

## Calendars

- Estándar: Mon-Fri 09:00-13:00, 15:00-19:00; Sat-Sun off.

## Resources

| Resource |
| --- |
| No Asignado |
| Tulio Romero |
| Calidad |
| Seguridad de la Información |
| Producción |

## Schedule

| ID | WBS | Task | Type | Duration | Start | Finish | Predecessors | Constraint | Resources |
| --- | --- | --- | --- | --- | --- | --- | --- | --- | --- |
| 1 | 1 | **Compensación** |  | 68.87d | 2020-09-07 | 2020-12-11 |  |  |  |
| 2 | 1.1 | **Automatización y Migración de Compensación** |  | 68.87d | 2020-09-07 | 2020-12-11 |  |  |  |
| 3 | 1.1.1 | **Analisis de prerequisitos** |  | 7d | 2020-09-07 | 2020-09-16 |  |  |  |
| 4 | 1.1.1.1 | Recopilación de tareas necesarias para el desarrollo de compensación |  | 1.88d | 2020-09-07 | 2020-09-09 |  | start no earlier than 2020-04-13 | Tulio Romero |
| 5 | 1.1.1.2 | Analisis del estado actual del servidor de aplicación compensación y solicitar clon de servidor |  | 7d | 2020-09-07 | 2020-09-16 |  |  | Tulio Romero |
| 6 | 1.1.1.3 | Analisis del estado actual del servidor de base de datos |  | 0.38d | 2020-09-07 | 2020-09-08 | 5 |  | Tulio Romero |
| 7 | 1.1.1.4 | Levantamiento de proceso actual de compensación. |  | 4.12d | 2020-09-07 | 2020-09-11 | 6 |  | Tulio Romero |
| 8 | 1.1.1.5 | Solicitar bases de datos productivas que intervienen en la compensación |  | 5.75d | 2020-09-07 | 2020-09-15 | 7 |  | Tulio Romero |
| 9 | 1.1.1.6 | Preparación del ambiente para la Automatización y Migración de la compensación |  | 5.62d | 2020-09-07 | 2020-09-15 | 5 |  | Tulio Romero |
| 10 | 1.1.2 | **Generación de requisitos** |  | 4.62d | 2020-09-07 | 2020-09-14 |  |  |  |
| 11 | 1.1.2.1 | Generar Requisitos Funcionales para automatizar el proceso de ejecución de compensación |  | 4.62d | 2020-09-07 | 2020-09-14 | 3 |  | Tulio Romero |
| 12 | 1.1.2.2 | Generar Requisitos Funcionales para migración del aplicativo de compensación |  | 4.5d | 2020-09-07 | 2020-09-14 | 8 |  | Tulio Romero |
| 13 | 1.1.3 | **Diseño** |  | 7.88d | 2020-09-07 | 2020-09-17 |  |  |  |
| 14 | 1.1.3.1 | Generación de diagrama de despliegue |  | 5.38d | 2020-09-07 | 2020-09-15 | 10 |  | Tulio Romero |
| 15 | 1.1.3.2 | Generación de diagrama de Interacción con componentes banco |  | 1.88d | 2020-09-07 | 2020-09-09 | 14 |  | Tulio Romero |
| 16 | 1.1.3.3 | Generación de documentación |  | 7.88d | 2020-09-07 | 2020-09-17 | 15 |  | Tulio Romero |
| 17 | 1.1.3.4 | Hito: Documentación de Diseño de la solución | milestone | 0d | 2020-09-07 | 2020-09-17 | 16 |  | Tulio Romero |
| 18 | 1.1.4 | **Desarrollo Automatización de Compensación** |  | 31.87d | 2020-09-07 | 2020-10-21 |  |  |  |
| 19 | 1.1.4.1 | **Modificación Compensación** |  | 26d | 2020-09-07 | 2020-10-13 |  |  |  |
| 20 | 1.1.4.1.1 | Revisión de Requisitos Funcionales |  | 2d | 2020-09-07 | 2020-09-09 | 13 |  | Tulio Romero |
| 21 | 1.1.4.1.2 | Entrega de habilitantes Automatización de Compnesación. |  | 2d | 2020-09-07 | 2020-09-09 | 20 |  |  |
| 22 | 1.1.4.1.3 | Actualización del extremeclient |  | 5d | 2020-09-07 | 2020-09-16 | 21 |  |  |
| 23 | 1.1.4.1.4 | Implementacion de proceso Batch para emision de tarjetas Inominadas |  | 5d | 2020-09-07 | 2020-09-23 | 22 |  |  |
| 24 | 1.1.4.1.5 | Pruebas del emisión e impresión de tarjetas nominadas e inominadas |  | 6d | 2020-09-07 | 2020-10-01 | 23 |  |  |
| 25 | 1.1.4.1.6 | Ajustes sobre inputfile |  | 8d | 2020-09-07 | 2020-10-13 | 24 |  |  |

| ID | WBS | Task | Type | Duration | Start | Finish | Predecessors | Resources |
| --- | --- | --- | --- | --- | --- | --- | --- | --- |
| 26 | 1.1.4.2 | **Impresión Descentralizada** |  | 31.87d | 2020-09-07 | 2020-10-21 |  |  |
| 27 | 1.1.4.2.1 | Revisión Archivos para Full filme |  | 3d | 2020-09-07 | 2020-09-22 | 13 |  |
| 28 | 1.1.4.2.2 | Modificación de software extreme para Impresión descentralizada |  | 6d | 2020-09-07 | 2020-09-30 | 27 |  |
| 29 | 1.1.4.2.3 | Implementación y revisión de entregables para actualización CMS del software extreme. |  | 7.88d | 2020-09-07 | 2020-09-17 | 28 | Tulio Romero |
| 30 | 1.1.4.2.4 | Generación de servidor IIS para WSDL Imp Descentralizada |  | 9.88d | 2020-09-07 | 2020-09-21 | 29 | Tulio Romero |
| 31 | 1.1.4.2.5 | Implementación de WSDL de impresora |  | 7.75d | 2020-09-07 | 2020-09-17 | 30 | Tulio Romero |
| 32 | 1.1.4.2.6 | Validar protocolos de seguridad implementados en el proceso de impresión. |  | 3d | 2020-09-07 | 2020-09-22 | 31 |  |
| 33 | 1.1.4.2.7 | Pruebas impresión tarjetas inominadas personalizadas |  | 15.88d | 2020-09-07 | 2020-09-29 | 32 | Tulio Romero |
| 34 | 1.1.4.2.8 | Pruebas BAP |  | 5d | 2020-09-07 | 2020-10-06 | 33 |  |
| 35 | 1.1.4.2.9 | Ejecucion de pruebas de integración CMS, Inputfile |  | 12.75d | 2020-09-07 | 2020-09-24 | 34 | Tulio Romero |
| 36 | 1.1.4.2.10 | Realización de correcciones |  | 13.75d | 2020-09-07 | 2020-09-25 | 35 | Tulio Romero |
| 37 | 1.1.4.2.11 | Generación de documentación |  | 7.88d | 2020-09-07 | 2020-09-17 | 36 | Tulio Romero |
| 38 | 1.1.4.2.12 | Validación adicional impresora |  | 31.87d | 2020-09-07 | 2020-10-21 | 37 | Tulio Romero |
| 39 | 1.1.4.2.13 | HITO: Checklist de instalación | milestone | 0d | 2020-09-07 | 2020-10-21 | 38 | Tulio Romero |
| 40 | 1.1.5 | **Certificación** |  | 57.87d | 2020-09-07 | 2020-11-26 |  |  |
| 41 | 1.1.5.1 | **Calidad** |  | 50.87d | 2020-09-07 | 2020-11-17 |  |  |
| 42 | 1.1.5.1.1 | Preparación del ambiente |  | 1d | 2020-09-07 | 2020-10-22 | 26 |  |
| 43 | 1.1.5.1.2 | Check list de pruebas |  | 1d | 2020-09-07 | 2020-10-23 | 42 |  |
| 45 | 1.1.5.1.4 | Informe de certificación |  | 1d | 2020-09-07 | 2020-11-17 |  |  |
| 46 | 1.1.5.1.5 | HITO: Informe de certificación | milestone | 0d | 2020-09-07 | 2020-11-17 | 45 |  |
| 47 | 1.1.5.2 | **Seguridad de la Información** |  | 57.87d | 2020-09-07 | 2020-11-26 |  |  |
| 48 | 1.1.5.2.1 | Análisis de vulnerabilidades |  | 2d | 2020-09-07 | 2020-11-19 | 45 |  |
| 49 | 1.1.5.2.2 | Verificación de la aplicación |  | 2d | 2020-09-07 | 2020-11-23 | 48 |  |
| 50 | 1.1.5.2.3 | Ethical hacking |  | 2d | 2020-09-07 | 2020-11-25 | 49 |  |
| 51 | 1.1.5.2.4 | Preparar informe |  | 1d | 2020-09-07 | 2020-11-26 | 50 |  |
| 52 | 1.1.5.2.5 | HITO: Informe de seguridad de la información | milestone | 0d | 2020-09-07 | 2020-11-26 | 51 |  |

| ID | WBS | Task | Type | Duration | Start | Finish | Predecessors | Resources |
| --- | --- | --- | --- | --- | --- | --- | --- | --- |
| 53 | 1.1.6 | **Producción** |  | 68.87d | 2020-09-07 | 2020-12-11 |  |  |
| 54 | 1.1.6.1 | Verificación de ambiente |  | 1d | 2020-09-07 | 2020-11-27 | 40 | Producción |
| 55 | 1.1.6.2 | Ejecución de check list |  | 1d | 2020-09-07 | 2020-11-30 | 54 | Producción |
| 56 | 1.1.6.3 | Puesta en producción |  | 1d | 2020-09-07 | 2020-12-01 | 55 | Producción |
| 57 | 1.1.6.4 | Soporte Pos Producción |  | 8d | 2020-09-07 | 2020-12-11 | 56 | Producción |
| 58 | 1.1.6.5 | HITO: Acta de puesta en producción | milestone | 0d | 2020-09-07 | 2020-12-11 | 57 | Producción |
